# H:\Southern New Hampshire CIS Courses\IT 625\IT 625 - Course Information\IT 625 - Medical Informatics\IT 625 - 2017 - Updates\IT625 Medical Informatics Case Study Project Plan

Schedule from MS Project, 2017-02-14 to 2017-12-31, status date 2017-03-15, costs in $, A marks actual dates.

## Calendars

- Standard: Mon-Fri 08:00-12:00, 13:00-17:00; Sat-Sun off. Exceptions (off unless hours are given): 2017-09-02 08:00-12:00, 13:00-17:00, 2017-11-11 08:00-12:00, 13:00-17:00, 2017-12-31 08:00-12:00, 13:00-17:00.

## Resources

| Resource | Rate | Cost per use |
| --- | --- | --- |
| Business Analyst | 50 | 15 |
| ETL Dev 1 | 75 |  |
| ETL Dev 2 | 75 |  |
| Report Dev 1 | 90 |  |
| Project Manager | 80 | 20 |
| Architect | 75 |  |
| QA | 50 |  |
| Report Dev 2 | 90 |  |
| Project Manager | 75 |  |
| SME | 60 |  |
| IS Manager | 95 |  |
| Business Owner | 100 |  |
| All stakeholders |  | 10 |
| DBA1 | 90 | 10 |
| Developer | 90 |  |
| Technical Support | 55 |  |
| Developre |  |  |
| <New Resource> |  |  |

## Schedule

| ID | WBS | Task | Type | Duration | Start | Finish | Predecessors | Complete | Remaining | Baseline start | Baseline finish | Baseline duration | Baseline 1 start | Baseline 1 finish | Total slack | Constraint | Resources | Work | Actual work | Cost | Baseline cost | Actual cost |
| --- | --- | --- | --- | --- | --- | --- | --- | --- | --- | --- | --- | --- | --- | --- | --- | --- | --- | --- | --- | --- | --- | --- |
| 1 | 1 | **Wellness Vendor Project** |  | 232d | 2017-02-14 A | 2017-12-31 |  | 24% | 176.35d | 2017-02-14 | 2017-12-31 | 232d | 2015-05-04 | 2016-06-08 | 0d |  |  | 3238.8h | 850.8h | 234,124 | 234,124 | 69,233 |
| 2 | 1.1 | **Initiation** |  | 24d | 2017-05-04 A | 2017-06-06 |  | 89% | 2.64d | 2017-05-04 | 2017-06-06 | 24d | 2015-05-04 | 2015-06-04 | 151d |  |  | 80h | 71.2h | 7,680 | 7,680 | 6,824 |
| 3 | 1.1.1 | Budget dollar service request |  | 5d | 2017-05-04 A | 2017-05-10 A |  | 100% |  | 2017-05-04 | 2017-05-10 | 5d | 2015-05-04 | 2015-05-08 |  |  | IS Manager | 40h | 40h | 3,800 | 3,800 | 3,800 |
| 4 | 1.1.2 | Project Charter |  | 2d | 2017-06-03 A | 2017-06-06 |  | 75% | 0.5d | 2017-06-03 | 2017-06-06 | 2d | 2015-06-03 | 2015-06-04 | 151d | finish no earlier than 2015-06-03 | Business Owner | 16h | 12h | 1,600 | 1,600 | 1,200 |
| 5 | 1.1.3 | Obtain Approvals | milestone | 3d | 2017-06-02 A | 2017-06-06 |  | 80% | 0.6d | 2017-06-02 | 2017-06-06 | 3d | 2015-06-02 | 2015-06-04 | 151d | start no earlier than 2015-04-23 | IS Manager | 24h | 19.2h | 2,280 | 2,280 | 1,824 |
| 6 | 1.2 | **Planning** |  | 41d | 2017-06-11 A | 2017-08-07 |  | 87% | 5.47d | 2017-06-11 | 2017-08-07 | 41d | 2015-06-11 | 2015-08-04 | 107d |  |  | 144h | 120h | 10,440 | 10,440 | 8,760 |
| 7 | 1.2.1 | Project Plan |  | 8d | 2017-07-15 A | 2017-08-04 A |  | 100% |  | 2017-07-15 | 2017-08-04 | 8d | 2015-07-15 | 2015-08-04 |  | finish no earlier than 2015-08-04 | Project Manager | 64h | 64h | 4,800 | 4,800 | 4,800 |
| 8 | 1.2.2 | Resource allocation approvals |  | 4d | 2017-06-11 A | 2017-08-07 | 7 | 75% | 1d | 2017-06-11 | 2017-08-07 | 4d | 2015-06-11 | 2015-06-16 | 107d | finish no earlier than 2017-06-15 | Project Manager | 32h | 24h | 2,400 | 2,400 | 1,800 |
| 9 | 1.2.3 | **Communication** |  | 3d | 2017-07-29 A | 2017-08-02 |  | 67% | 1d | 2017-07-29 | 2017-08-02 | 3d | 2015-07-29 | 2015-08-03 | 110d |  |  | 48h | 32h | 3,240 | 3,240 | 2,160 |
| 10 | 1.2.3.1 | Develop Communication Plan | milestone | 0d | 2017-07-29 A | 2017-07-29 A |  | 100% |  | 2017-07-29 | 2017-07-29 | 0d | 2015-07-29 | 2015-07-29 |  | start no earlier than 2015-07-29 | Project Manager |  |  |  |  |  |
| 11 | 1.2.3.2 | Review/Approve Communication Plan | milestone | 3d | 2017-07-31 A | 2017-08-02 | 10 | 67% | 1d | 2017-07-31 | 2017-08-02 | 3d | 2015-07-31 | 2015-08-03 | 110d | finish no earlier than 2017-08-02 | Project Manager; SME | 48h | 32h | 3,240 | 3,240 | 2,160 |
| 12 | 1.3 | Project Kickoff | milestone | 1d | 2017-05-05 A | 2017-05-05 A |  | 100% |  | 2017-05-05 | 2017-05-05 | 1d | 2015-08-05 | 2015-08-05 |  |  | All stakeholders | 8h | 8h | 10 | 10 | 10 |
| 13 | 1.4 | **Execution** |  | 119d | 2017-07-13 A | 2017-12-22 |  | 34% | 78.69d | 2017-07-13 | 2017-12-22 | 119d | 2015-07-13 | 2015-12-21 | 6d |  |  | 2771.6h | 651.6h | 197,324 | 197,324 | 53,639 |
| 14 | 1.4.1 | **Vendor Wellness DB Tables** |  | 55d | 2017-08-10 A | 2017-10-24 |  | 98% | 1.02d | 2017-08-10 | 2017-10-24 | 55d | 2015-08-10 | 2015-10-22 | 50d |  |  | 424h | 416h | 35,685 | 35,685 | 35,285 |
| 15 | 1.4.1.1 | **Create Tables** |  | 48d | 2017-08-10 A | 2017-10-13 A |  | 100% |  | 2017-08-10 | 2017-10-13 | 48d | 2015-08-10 | 2015-10-13 |  |  |  | 368h | 368h | 32,525 | 32,525 | 32,525 |
| 16 | 1.4.1.1.1 | Create/Modify vendor database tables |  | 41d | 2017-08-10 A | 2017-10-04 A |  | 100% |  | 2017-08-10 | 2017-10-04 | 41d | 2015-08-10 | 2015-10-02 |  | finish no earlier than 2015-07-20 | DBA1 | 320h | 320h | 28,810 | 28,810 | 28,810 |
| 17 | 1.4.1.1.2 | Promote tables to QA |  | 2d | 2017-10-12 A | 2017-10-13 A | 16 | 100% |  | 2017-10-12 | 2017-10-13 | 2d | 2015-10-12 | 2015-10-13 |  | finish no earlier than 2015-07-24 | DBA1 | 16h | 16h | 1,450 | 1,450 | 1,450 |
| 18 | 1.4.1.1.3 | Validate tables |  | 2d | 2017-10-05 A | 2017-10-06 A | 17 | 100% |  | 2017-10-05 | 2017-10-06 | 2d | 2015-10-05 | 2015-10-07 |  | finish no earlier than 2015-07-17 | DBA1 | 16h | 16h | 1,450 | 1,450 | 1,450 |
| 19 | 1.4.1.1.4 | UAT |  | 2d | 2017-10-05 A | 2017-10-06 A | 18 | 100% |  | 2017-10-05 | 2017-10-06 | 2d | 2015-10-05 | 2015-10-06 |  | start no earlier than 2015-09-03 | Business Analyst | 16h | 16h | 815 | 815 | 815 |
| 20 | 1.4.1.2 | **Promote Tables to Production** |  | 27d | 2017-09-16 A | 2017-10-24 |  | 86% | 3.86d | 2017-09-16 | 2017-10-24 | 27d | 2015-09-16 | 2015-10-22 | 50d |  |  | 56h | 48h | 3,160 | 3,160 | 2,760 |
| 21 | 1.4.1.2.1 | Create production ticket SR# |  | 3d | 2017-09-16 A | 2017-09-20 A |  | 100% |  | 2017-09-16 | 2017-09-20 | 3d | 2015-09-16 | 2015-09-18 |  | start no earlier than 2015-09-16 | Business Analyst | 24h | 24h | 1,215 | 1,215 | 1,215 |
| 22 | 1.4.1.2.2 | Deploy Tables |  | 1d | 2017-10-19 A | 2017-10-19 A |  | 100% |  | 2017-10-19 | 2017-10-19 | 1d | 2015-10-19 | 2015-10-19 |  | start no earlier than 2015-09-17 | DBA1 | 8h | 8h | 730 | 730 | 730 |
| 23 | 1.4.1.2.3 | Validate Tables |  | 3d | 2017-10-20 A | 2017-10-24 | 22 | 67% | 1d | 2017-10-20 | 2017-10-24 | 3d | 2015-10-20 | 2015-10-22 | 50d | finish no earlier than 2015-10-22 | Business Analyst | 24h | 16h | 1,215 | 1,215 | 815 |
| 24 | 1.4.2 | **Final Code Review-Module 1** |  | 27d | 2017-09-07 A | 2017-10-13 A |  | 100% |  | 2017-09-07 | 2017-10-13 | 27d | 2015-09-07 | 2015-10-16 |  |  |  | 120h | 120h | 9,215 | 9,215 | 9,215 |
| 25 | 1.4.2.1 | Module 1 code review |  | 21d | 2017-09-07 A | 2017-10-05 A |  | 100% |  | 2017-09-07 | 2017-10-05 | 21d | 2015-09-07 | 2015-10-05 |  | finish no earlier than 2015-10-05 | Developer | 80h | 80h | 7,200 | 7,200 | 7,200 |
| 26 | 1.4.2.2 | Validate data accuracy |  | 5d | 2017-10-09 A | 2017-10-13 A |  | 100% |  | 2017-10-09 | 2017-10-13 | 5d | 2015-10-09 | 2015-10-16 |  | finish no earlier than 2015-10-16 | Business Analyst | 40h | 40h | 2,015 | 2,015 | 2,015 |

| ID | WBS | Task | Duration | Start | Finish | Predecessors | Complete | Baseline start | Baseline finish | Baseline duration | Baseline 1 start | Baseline 1 finish | Total slack | Free slack | Constraint | Resources | Work | Actual work | Cost | Baseline cost | Actual cost |
| --- | --- | --- | --- | --- | --- | --- | --- | --- | --- | --- | --- | --- | --- | --- | --- | --- | --- | --- | --- | --- | --- |
| 27 | 1.4.3 | **Final Code Review-Module 2** | 26d | 2017-09-07 A | 2017-10-12 A |  | 100% | 2017-09-07 | 2017-10-12 | 26d | 2015-09-07 | 2015-10-16 |  |  |  |  | 115.6h | 115.6h | 9,139 | 9,139 | 9,139 |
| 28 | 1.4.3.1 | Module 2 code review | 21d | 2017-09-07 A | 2017-10-05 A |  | 100% | 2017-09-07 | 2017-10-05 | 21d | 2015-09-07 | 2015-10-05 |  |  | finish no earlier than 2015-10-05 | Developer | 83.6h | 83.6h | 7,524 | 7,524 | 7,524 |
| 29 | 1.4.3.2 | Validate data accuracy | 4d | 2017-10-09 A | 2017-10-12 A | 28 | 100% | 2017-10-09 | 2017-10-12 | 4d | 2015-10-09 | 2015-10-16 |  |  | finish no earlier than 2015-10-16 | Business Analyst | 32h | 32h | 1,615 | 1,615 | 1,615 |
| 30 | 1.4.4 | **Final Code Review-Module 3** | 33d | 2017-10-05 | 2017-11-17 |  |  | 2017-10-05 | 2017-11-17 | 33d | 2015-10-05 | 2015-10-26 | 31d |  |  |  | 128h |  | 1,625 | 1,625 |  |
| 31 | 1.4.4.1 | Module 3 code review | 12d | 2017-10-05 | 2017-10-20 |  |  | 2017-10-05 | 2017-10-20 | 12d | 2015-10-05 | 2015-10-20 | 32d | 0d | start no earlier than 2017-10-05 | All stakeholders | 96h |  | 10 | 10 |  |
| 32 | 1.4.4.2 | Validate data accuracy | 4d | 2017-11-14 | 2017-11-17 | 31 |  | 2017-11-14 | 2017-11-17 | 4d | 2015-10-21 | 2015-10-26 | 31d |  |  | Business Analyst | 32h |  | 1,615 | 1,615 |  |
| 33 | 1.4.5 | **Wellness Vendor Reporting** | 119d | 2017-07-13 | 2017-12-22 |  |  | 2017-07-13 | 2017-12-22 | 119d | 2015-07-13 | 2015-12-21 | 6d |  |  |  | 1984h |  | 141,660 | 141,660 |  |
| 34 | 1.4.5.1 | **Requirements** | 108d | 2017-07-13 | 2017-12-07 |  |  | 2017-07-13 | 2017-12-07 | 108d | 2015-07-13 | 2015-10-29 | 17d |  |  |  | 640h |  | 41,740 | 41,740 |  |
| 35 | 1.4.5.1.1 | Define Business Rules | 32d | 2017-07-13 | 2017-12-07 |  |  | 2017-07-13 | 2017-12-07 | 32d | 2015-07-13 | 2015-08-03 | 17d |  | start no earlier than 2017-07-13 | Business Analyst; Project Manager | 256h |  | 16,675 | 16,675 |  |
| 36 | 1.4.5.1.2 | Data Mapping | 22d | 2017-09-28 | 2017-11-30 |  |  | 2017-09-28 | 2017-11-30 | 22d | 2015-09-28 | 2015-10-12 | 22d |  | start no earlier than 2017-09-28 | Business Analyst; Project Manager | 176h |  | 11,475 | 11,475 |  |
| 37 | 1.4.5.1.3 | Report mockups | 8d | 2017-10-17 | 2017-11-29 |  |  | 2017-10-17 | 2017-11-29 | 8d | 2015-10-13 | 2015-10-16 | 23d |  | start no earlier than 2017-10-17 | Business Analyst; Project Manager | 64h |  | 4,195 | 4,195 |  |
| 38 | 1.4.5.1.4 | Documentation and Current Mockup Layouts | 18d | 2017-10-19 | 2017-12-01 |  |  | 2017-10-19 | 2017-12-01 | 18d | 2015-10-19 | 2015-10-29 | 21d |  | start no earlier than 2017-10-19 | Business Analyst; Project Manager | 144h |  | 9,395 | 9,395 |  |
| 39 | 1.4.5.2 | Requirements Approved | 2d | 2017-09-02 | 2017-09-04 |  |  | 2017-09-02 | 2017-09-04 | 2d | 2015-09-02 | 2015-09-03 | 86d |  | start no earlier than 2017-09-02 |  |  |  |  |  |  |
| 40 | 1.4.5.3 | **Report Development** | 52d | 2017-10-13 | 2017-12-22 |  |  | 2017-10-13 | 2017-12-22 | 52d | 2015-10-13 | 2015-12-21 | 6d |  |  |  | 1344h |  | 99,920 | 99,920 |  |
| 41 | 1.4.5.3.1 | Report file layout data mapping | 16d | 2017-10-31 | 2017-12-06 |  |  | 2017-10-31 | 2017-12-06 | 16d | 2015-10-30 | 2015-11-20 | 18d |  | start no earlier than 2017-10-31 | Report Dev 1 | 128h |  | 11,520 | 11,520 |  |
| 42 | 1.4.5.3.2 | Report UAT | 8d | 2017-12-13 | 2017-12-22 |  |  | 2017-12-13 | 2017-12-22 | 8d | 2015-11-18 | 2015-11-27 | 6d |  | start no earlier than 2017-12-13 | Report Dev 1 | 64h |  | 5,760 | 5,760 |  |
| 43 | 1.4.5.3.3 | Reports Approved by Business Owner/Vendor | 2d | 2017-12-05 | 2017-12-06 |  |  | 2017-12-05 | 2017-12-06 | 2d | 2015-12-04 | 2015-12-07 | 18d |  | start no earlier than 2017-12-05 | IS Manager; Business Owner | 32h |  | 3,120 | 3,120 |  |
| 44 | 1.4.5.3.4 | **QA** | 50d | 2017-10-13 | 2017-12-20 |  |  | 2017-10-13 | 2017-12-20 | 50d | 2015-10-13 | 2015-12-21 | 8d |  |  |  | 1120h |  | 79,520 | 79,520 |  |
| 45 | 1.4.5.3.4.1 | Test Case Creation | 22d | 2017-10-13 | 2017-11-11 |  |  | 2017-10-13 | 2017-11-11 | 22d | 2015-10-13 | 2015-11-11 | 8d | 0d | start no earlier than 2017-10-13 | QA | 176h |  | 8,800 | 8,800 |  |
| 46 | 1.4.5.3.4.2 | Test Case Execution | 28d | 2017-11-13 | 2017-12-20 | 45 |  | 2017-11-13 | 2017-12-20 | 28d | 2015-11-12 | 2015-12-21 | 8d |  | start no earlier than 2016-11-12 | QA | 224h |  | 11,200 | 11,200 |  |
| 47 | 1.4.5.3.4.3 | Deploy Reports to Production | 2d | 2017-11-10 | 2017-11-11 |  |  | 2017-11-10 | 2017-11-11 | 2d | 2015-11-10 | 2015-11-11 | 36d |  | start no earlier than 2017-11-10 | Developer | 16h |  | 1,440 | 1,440 |  |
| 48 | 1.4.5.3.4.4 | **UAT** | 27d | 2017-11-11 | 2017-12-18 |  |  | 2017-11-11 | 2017-12-18 | 27d | 2015-11-11 | 2015-12-10 | 10d |  |  |  | 704h |  | 58,080 | 58,080 |  |
| 49 | 1.4.5.3.4.4.1 | Testing Support | 8d | 2017-11-11 | 2017-12-18 |  |  | 2017-11-11 | 2017-12-18 | 8d | 2015-11-11 | 2015-11-16 | 10d |  | start no earlier than 2017-11-11 | ETL Dev 1; Report Dev 1; ETL Dev 2; Report Dev 2 | 128h |  | 10,560 | 10,560 |  |
| 50 | 1.4.5.3.4.4.2 | Remediation | 4d | 2017-11-17 | 2017-11-22 |  |  | 2017-11-17 | 2017-11-22 | 4d | 2015-11-17 | 2015-11-20 | 14d | 0d | start no earlier than 2017-11-17 | ETL Dev 1; Report Dev 1; ETL Dev 2; Report Dev 2 | 128h |  | 10,560 | 10,560 |  |
| 51 | 1.4.5.3.4.4.3 | Production Support | 14d | 2017-11-23 | 2017-12-12 | 50 |  | 2017-11-23 | 2017-12-12 | 14d | 2015-11-23 | 2015-12-10 | 14d |  | start no earlier than 2016-11-23 | ETL Dev 1; ETL Dev 2; Report Dev 1; Report Dev 2 | 448h |  | 36,960 | 36,960 |  |

Notes:
- 30: Project BEHIND

| ID | WBS | Task | Type | Duration | Start | Finish | Predecessors | Baseline start | Baseline finish | Baseline duration | Baseline 1 start | Baseline 1 finish | Total slack | Free slack | Constraint | Resources | Work | Cost | Baseline cost |
| --- | --- | --- | --- | --- | --- | --- | --- | --- | --- | --- | --- | --- | --- | --- | --- | --- | --- | --- | --- |
| 52 | 1.5 | **Oversight** |  | 92d | 2017-07-13 | 2017-11-15 |  | 2017-07-13 | 2017-11-15 | 92d | 2015-07-13 | 2015-11-17 | 33d |  |  |  | 147.2h | 11,410 | 11,410 |
| 53 | 1.5.1 | Project Manager |  | 92d | 2017-07-13 | 2017-11-15 |  | 2017-07-13 | 2017-11-15 | 92d | 2015-07-13 | 2015-11-17 | 33d |  | start no earlier than 2017-07-13 | Project Manager [10%] | 73.6h | 5,890 | 5,890 |
| 54 | 1.5.2 | Architect |  | 92d | 2017-07-13 | 2017-11-15 |  | 2017-07-13 | 2017-11-15 | 92d | 2015-07-13 | 2015-11-17 | 33d |  | start no earlier than 2017-07-13 | Architect [10%] | 73.6h | 5,520 | 5,520 |
| 55 | 1.6 | **Go-Live** |  | 1d | 2017-12-21 | 2017-12-21 |  | 2017-12-21 | 2017-12-21 | 1d | 2016-06-06 | 2016-06-08 | 7d |  |  |  | 8h |  |  |
| 56 | 1.6.1 | Go-Live Milestone |  | 1d | 2017-12-21 | 2017-12-21 |  | 2017-12-21 | 2017-12-21 | 1d | 2016-06-06 | 2016-06-06 | 7d |  | start no earlier than 2017-12-21 |  |  |  |  |
| 57 | 1.6.2 | Module Reports in Production- Go live |  | 1d | 2017-12-21 | 2017-12-21 |  | 2017-12-21 | 2017-12-21 | 1d | 2016-06-08 | 2016-06-08 | 7d |  | start no earlier than 2017-12-21 |  | 8h |  |  |
| 58 | 1.7 | **Monitor and Control** |  | 107d | 2017-02-14 | 2017-07-13 |  | 2017-02-14 | 2017-07-13 | 107d | 2015-07-13 | 2016-04-04 | 125d |  |  |  | 48h | 4,680 | 4,680 |
| 59 | 1.7.1 | **Support** |  | 107d | 2017-02-14 | 2017-07-13 |  | 2017-02-14 | 2017-07-13 | 107d | 2015-07-13 | 2016-04-04 | 125d |  |  |  | 48h | 4,680 | 4,680 |
| 60 | 1.7.1.1 | Define Support Process |  | 3d | 2017-02-14 | 2017-02-16 |  | 2017-02-14 | 2017-02-16 | 3d | 2016-03-28 | 2016-03-30 | 226d | 0d | start no earlier than 2017-02-14 | IS Manager | 24h | 2,280 | 2,280 |
| 61 | 1.7.1.2 | Review Support Process |  | 3d | 2017-02-17 | 2017-02-21 | 60 | 2017-02-17 | 2017-02-21 | 3d | 2016-03-31 | 2016-04-04 | 226d |  | start no earlier than 2016-03-31 | Business Owner | 24h | 2,400 | 2,400 |
| 62 | 1.7.1.3 | Support Process Approved | milestone | 0d | 2017-07-13 | 2017-07-13 |  | 2017-07-13 | 2017-07-13 | 0d | 2015-07-13 | 2015-07-13 | 125d |  | start no earlier than 2017-07-13 | IS Manager; Business Owner |  |  |  |
| 63 | 1.8 | **Closing** |  | 4d | 2017-12-27 | 2017-12-31 |  | 2017-12-27 | 2017-12-31 | 4d | 2016-06-24 | 2016-06-29 | 0d |  |  |  | 32h | 2,580 | 2,580 |
| 64 | 1.8.1 | Lessons Learned |  | 4d | 2017-12-27 | 2017-12-31 |  | 2017-12-27 | 2017-12-31 | 4d | 2016-06-24 | 2016-06-29 | 0d |  | start no earlier than 2017-12-27 | Project Manager | 32h | 2,580 | 2,580 |
